Schedule from MS Project, 2017-10-11 to 2018-01-15, costs in ¥, A marks actual dates.
Microsoft

## Calendars

- 标准: Mon-Fri 08:00-12:00, 13:00-17:00; Sat-Sun off. Exceptions (off unless hours are given): 2017-10-29 08:00-12:00, 13:00-17:00, 2017-11-04 08:00-12:00, 13:00-17:00, 2018-01-14 08:00-12:00, 13:00-17:00.

## Resources

| Resource | Rate |
| --- | --- |
| G17全组成员 | 30.97 |
| 蒋家俊 | 30.97 |
| 李捷 | 30.97 |
| 朱秉 | 30.97 |
| 厉佩强 | 30.97 |
| 周盛 | 30.97 |

## Schedule

| ID | WBS | Task | Type | Duration | Start | Finish | Predecessors | Complete | Remaining | Actual start | Actual finish | Total slack | Constraint | Resources | Work | Actual work | Cost | Actual cost |
| --- | --- | --- | --- | --- | --- | --- | --- | --- | --- | --- | --- | --- | --- | --- | --- | --- | --- | --- |
| 1 | 1 | **软件工程系列课程教学辅助网站需求工程计划** |  | 72d | 2017-10-11 09:00 A | 2018-01-15 18:00 |  | 74% | 18.65d |  |  |  |  |  | 213.75h | 158.31h | 6,619.77 | 4,902.79 |
| 2 | 1.1 | **项目准备** |  | 4d | 2017-10-11 09:00 A | 2017-10-14 18:00 |  | 100% |  |  | 2017-10-14 10:00 |  |  |  | 14h | 14h | 433.58 | 433.58 |
| 3 | 1.1.1 | 项目任务书下达 | manual | 0.12d | 2017-10-11 09:00 A | 2017-10-11 10:00 A |  | 100% |  |  |  |  |  | 蒋家俊 | 1h | 1h | 30.97 | 30.97 |
| 4 | 1.1.2 | logo设计 | manual | 2h | 2017-10-12 09:00 A | 2017-10-12 11:00 A | 3 | 100% |  |  |  |  |  | 周盛 | 2h | 2h | 61.94 | 61.94 |
| 5 | 1.1.3 | 小组会议 | manual | 0.12d | 2017-10-12 09:00 A | 2017-10-12 10:00 A | 4 | 100% |  |  |  |  |  | 蒋家俊; 李捷; 厉佩强; 周盛; 朱秉 | 5h | 5h | 154.85 | 154.85 |
| 6 | 1.1.4 | 软件资源配置 | manual | 0.12d | 2017-10-13 09:00 A | 2017-10-13 10:00 A | 5 | 100% |  |  |  |  |  | 蒋家俊 | 1h | 1h | 30.97 | 30.97 |
| 7 | 1.1.5 | UML学习 |  | 0.12d | 2017-10-14 09:00 A | 2017-10-14 10:00 A | 6 | 100% |  |  |  |  |  | 蒋家俊; 李捷; 厉佩强; 周盛; 朱秉 | 5h | 5h | 154.85 | 154.85 |
| 8 | 1.2 | **可行性分析报告** |  | 7d | 2017-10-14 09:00 A | 2017-10-21 18:00 | 7 | 100% |  |  | 2017-10-19 18:00 |  |  |  | 37h | 37h | 1,145.89 | 1,145.89 |
| 9 | 1.2.1 | 技术可行性分析 |  | 0.12d | 2017-10-14 09:00 A | 2017-10-14 10:00 A | 7 | 100% |  |  |  |  |  | 李捷 [50%]; 厉佩强 [50%] | 1h | 1h | 30.97 | 30.97 |
| 10 | 1.2.2 | 用户使用可行性分析 |  | 0.12d | 2017-10-14 09:00 A | 2017-10-14 10:00 A | 9 | 100% |  |  |  |  |  | 周盛 [50%]; 朱秉 [50%] | 1h | 1h | 30.97 | 30.97 |
| 11 | 1.2.3 | 设备可行性分析 |  | 0.12d | 2017-10-15 09:00 A | 2017-10-15 10:00 A | 10 | 100% |  |  |  |  |  | 朱秉 | 1h | 1h | 30.97 | 30.97 |
| 12 | 1.2.4 | 相关软件学习 |  | 0.62d | 2017-10-15 09:00 A | 2017-10-15 15:00 A | 11 | 100% |  |  |  |  |  | 蒋家俊 [20%]; 李捷 [20%]; 厉佩强 [20%]; 周盛 [20%]; 朱秉 [20%] | 5h | 5h | 154.85 | 154.85 |
| 13 | 1.2.5 | 文档编写 |  | 3d | 2017-10-15 09:00 A | 2017-10-17 18:00 A | 12 | 100% |  |  |  |  |  | 蒋家俊 [20%]; 李捷 [20%]; 厉佩强 [20%]; 周盛 [20%]; 朱秉 [20%] | 24h | 24h | 743.28 | 743.28 |
| 14 | 1.2.6 | 小组会议 | manual | 1d | 2017-10-19 09:00 A | 2017-10-19 18:00 A | 13 | 100% |  |  |  |  |  | 蒋家俊 [20%]; 李捷 [20%]; 厉佩强 [20%]; 周盛 [20%]; 朱秉 [20%] | 5h | 5h | 154.85 | 154.85 |
| 15 | 1.3 | **项目计划** |  | 7d | 2017-10-21 09:00 | 2017-10-29 18:00 | 14 | 91% | 0.66d | 2017-10-19 09:00 |  |  |  |  | 22.08h | 20.08h | 683.82 | 621.88 |
| 16 | 1.3.1 | OBS | manual | 0.12d | 2017-10-19 09:00 A | 2017-10-19 10:00 A | 14 | 100% |  |  |  |  |  | 蒋家俊 | 1h | 1h | 30.97 | 30.97 |
| 17 | 1.3.2 | WBS |  | 0.38d | 2017-10-21 09:00 A | 2017-10-21 12:00 A | 16 | 100% |  |  |  |  | finish no earlier than 2017-10-22 18:00 | 周盛 | 3h | 3h | 92.91 | 92.91 |
| 18 | 1.3.3 | 甘特图编写 | manual | 3h | 2017-10-23 09:00 A | 2017-10-23 12:00 A | 17 | 100% |  |  |  |  |  | 蒋家俊 | 3h | 3h | 92.91 | 92.91 |
| 19 | 1.3.4 | 小组会议 | manual | 0.13d | 2017-10-23 09:00 A | 2017-10-23 10:02 A | 18 | 100% |  |  |  |  |  | 蒋家俊 [20%]; 李捷 [20%]; 厉佩强 [20%]; 周盛 [20%]; 朱秉 [20%] | 1.04h | 1.04h | 32.21 | 32.21 |
| 20 | 1.3.5 | 项目计划草稿编写 |  | 0.88d | 2017-10-23 09:00 A | 2017-10-23 18:00 | 19 | 71% | 0.25d |  |  | 63d | finish no earlier than 2017-10-23 18:00 | 李捷 [25%]; 厉佩强 [25%]; 周盛 [25%]; 朱秉 [25%] | 7h | 5h | 216.79 | 154.85 |
| 21 | 1.3.6 | 项目计划1.0 | manual | 0.12d | 2017-10-24 09:00 A | 2017-10-25 09:00 A | 20 | 100% |  |  |  |  |  | 厉佩强; 朱秉; 周盛 | 2h | 2h | 61.94 | 61.94 |
| 22 | 1.3.7 | 小组会议 |  | 0.13d | 2017-10-26 09:00 A | 2017-10-26 10:02 A | 21 | 100% |  |  |  |  | start no earlier than 2017-10-26 09:00 | 蒋家俊 [20%]; 李捷 [20%]; 厉佩强 [20%]; 周盛 [20%]; 朱秉 [20%] | 1.04h | 1.04h | 32.21 | 32.21 |
| 23 | 1.3.8 | 项目章程 | manual | 0.38d | 2017-10-26 09:00 A | 2017-10-26 12:00 A | 22 | 100% |  |  |  |  |  | 周盛 | 3h | 3h | 92.91 | 92.91 |
| 24 | 1.3.9 | 项目计划2.0 | manual | 0.12d | 2017-10-29 09:00 A | 2017-10-29 10:00 A | 23 | 100% |  |  |  |  |  | 蒋家俊 | 1h | 1h | 30.97 | 30.97 |
| 25 | 1.4 | 项目启动 | milestone | 0d | 2017-10-28 18:00 A | 2017-10-28 18:00 A | 24 | 100% |  |  |  |  |  |  |  |  |  |  |
| 26 | 1.5 | 需求工程计划初步 | manual | 0.16d | 2017-10-29 09:00 A | 2017-10-29 10:15 A | 25 | 100% |  |  |  |  |  | 李捷; 厉佩强; 周盛; 朱秉 | 5h | 5h | 154.85 | 154.85 |

| ID | WBS | Task | Type | Duration | Start | Finish | Predecessors | Complete | Remaining | Constraint | Resources | Work | Actual work | Cost | Actual cost |
| --- | --- | --- | --- | --- | --- | --- | --- | --- | --- | --- | --- | --- | --- | --- | --- |
| 27 | 1.6 | **需求获取** |  | 11d | 2017-10-29 09:00 A | 2017-11-10 09:00 | 26 | 96% | 0.44d |  |  | 19.28h | 18.24h | 597.1 | 564.89 |
| 28 | 1.6.1 | 定义愿景和范围 |  | 0.62d | 2017-10-29 09:00 A | 2017-10-29 15:00 A | 26 | 100% |  | start no earlier than 2017-10-29 09:00 | 李捷 | 1h | 1h | 30.97 | 30.97 |
| 29 | 1.6.2 | 确定需求开发过程 |  | 0.2d | 2017-10-30 09:00 A | 2017-10-30 10:36 A | 28 | 100% |  |  | 蒋家俊 | 1.6h | 1.6h | 49.55 | 49.55 |
| 30 | 1.6.3 | 用户群分类 |  | 0.2d | 2017-10-29 09:00 A | 2017-10-29 10:36 A | 29 | 100% |  | start no earlier than 2017-10-26 09:00 | 周盛 | 1.6h | 1.6h | 49.55 | 49.55 |
| 31 | 1.6.4 | 小组会议 | manual | 0.13d | 2017-10-29 09:00 | 2017-10-29 10:02 | 30 |  |  |  | 蒋家俊 [20%]; 李捷 [20%]; 厉佩强 [20%]; 周盛 [20%]; 朱秉 [20%] | 1.04h |  | 32.21 |  |
| 32 | 1.6.5 | 选择产品代表 |  | 0.12d | 2017-11-04 09:00 A | 2017-11-04 10:00 A | 31 | 100% |  | start no earlier than 2017-11-04 09:00 | 朱秉 | 1h | 1h | 30.97 | 30.97 |
| 33 | 1.6.6 | 建立核心队伍 |  | 0.2d | 2017-11-04 10:00 A | 2017-11-04 11:36 A | 32 | 100% |  |  | 蒋家俊 | 1.6h | 1.6h | 49.55 | 49.55 |
| 34 | 1.6.7 | 需求访谈 |  | 1h | 2017-11-05 09:00 A | 2017-11-05 10:00 A | 33 | 100% |  |  | 蒋家俊; 李捷; 厉佩强; 周盛 | 4h | 4h | 123.88 | 123.88 |
| 35 | 1.6.8 | 确定使用实例 |  | 0.88d | 2017-11-06 08:00 A | 2017-11-06 16:00 A | 34 | 100% |  | start no earlier than 2017-11-04 09:00 | 厉佩强 | 1.4h | 1.4h | 43.36 | 43.36 |
| 36 | 1.6.9 | 小组会议 | manual | 0.13d | 2017-11-06 16:00 A | 2017-11-07 08:02 A | 35 | 100% |  |  | 蒋家俊 [20%]; 李捷 [20%]; 厉佩强 [20%]; 周盛 [20%]; 朱秉 [20%] | 1.04h | 1.04h | 32.21 | 32.21 |
| 37 | 1.6.10 | 分析用户工作流程 |  | 0.12d | 2017-11-07 08:36 A | 2017-11-07 09:36 A | 36 | 100% |  |  | 朱秉 | 1h | 1h | 30.97 | 30.97 |
| 38 | 1.6.11 | 确定质量属性 |  | 0.12d | 2017-11-07 09:36 A | 2017-11-07 10:36 A | 37 | 100% |  |  | 朱秉 | 1h | 1h | 30.97 | 30.97 |
| 39 | 1.6.12 | 检查问题报告 |  | 0.12d | 2017-11-07 10:36 A | 2017-11-07 11:36 A | 38 | 100% |  |  | 朱秉 | 1h | 1h | 30.97 | 30.97 |
| 40 | 1.6.13 | 需求重用 |  | 0.12d | 2017-11-07 11:36 A | 2017-11-07 13:36 A | 39 | 100% |  | start no earlier than 2017-11-03 09:00 | 朱秉 | 1h | 1h | 30.97 | 30.97 |
| 41 | 1.6.14 | 小组会议 |  | 0.12d | 2017-11-07 13:36 A | 2017-11-07 14:36 A | 40 | 100% |  | start no earlier than 2017-10-30 09:00 | 蒋家俊 [20%]; 李捷 [20%]; 厉佩强 [20%]; 周盛 [20%]; 朱秉 [20%] | 1h | 1h | 30.97 | 30.97 |
| 42 | 1.7 | **需求分析** |  | 12d | 2017-11-05 09:00 A | 2017-11-18 18:00 | 41 | 77% | 2.75d |  |  | 13.08h | 11h | 405.09 | 340.67 |
| 43 | 1.7.1 | 绘制关联图 |  | 0.12d | 2017-11-07 14:36 A | 2017-11-07 15:36 A | 41 | 100% |  | start no earlier than 2017-11-06 09:00 | 李捷 | 1h | 1h | 30.97 | 30.97 |
| 44 | 1.7.2 | 创建开发原型 |  | 0.12d | 2017-11-08 09:00 A | 2017-11-08 10:00 A | 43 | 100% |  | start no earlier than 2017-11-08 09:00 | 厉佩强 | 1h | 1h | 30.97 | 30.97 |
| 45 | 1.7.3 | 分析可行性 |  | 0.12d | 2017-11-08 10:00 A | 2017-11-08 11:00 A | 44 | 100% |  | start no earlier than 2017-11-08 09:00 | 蒋家俊 | 1h | 1h | 30.97 | 30.97 |
| 46 | 1.7.4 | 确定需求优先级 |  | 0.12d | 2017-11-08 11:00 A | 2017-11-08 12:00 A | 45 | 100% |  |  | 李捷 | 1h | 1h | 30.97 | 30.97 |
| 47 | 1.7.5 | 为需求建立模型 |  | 0.12d | 2017-11-10 16:00 A | 2017-11-10 18:00 A | 46 | 100% |  | finish no earlier than 2017-11-10 18:00 | 厉佩强 | 1h | 1h | 30.97 | 30.97 |
| 48 | 1.7.6 | 小组会议 | manual | 0.13d | 2017-11-05 09:00 | 2017-11-05 10:02 |  |  |  |  | 蒋家俊 [20%]; 李捷 [20%]; 厉佩强 [20%]; 周盛 [20%]; 朱秉 [20%] | 1.04h |  | 32.21 |  |
| 49 | 1.7.7 | 需求访谈 | manual | 1h | 2017-11-15 09:00 A | 2017-11-15 10:00 A | 47 | 100% |  |  | 蒋家俊; 李捷; 厉佩强; 周盛; 朱秉 | 5h | 5h | 154.85 | 154.85 |
| 50 | 1.7.8 | 编写数据字典 |  | 0.12d | 2017-11-15 16:00 A | 2017-11-15 18:00 A | 49 | 100% |  | finish no earlier than 2017-11-15 18:00 | 周盛 | 1h | 1h | 30.97 | 30.97 |
| 51 | 1.7.9 | 小组会议 | manual | 0.13d | 2017-11-05 09:00 | 2017-11-05 10:02 |  |  |  |  | 蒋家俊 [20%]; 李捷 [20%]; 厉佩强 [20%]; 周盛 [20%]; 朱秉 [20%] | 1.04h |  | 32.21 |  |

| ID | WBS | Task | Type | Duration | Start | Finish | Predecessors | Complete | Remaining | Actual start | Total slack | Free slack | Constraint | Resources | Work | Actual work | Cost | Actual cost |
| --- | --- | --- | --- | --- | --- | --- | --- | --- | --- | --- | --- | --- | --- | --- | --- | --- | --- | --- |
| 52 | 1.8 | **需求规格说明** |  | 16d | 2017-11-18 09:00 A | 2017-12-08 18:00 | 50 | 87% | 2.11d |  |  |  |  |  | 22.59h | 16.35h | 699.54 | 506.29 |
| 53 | 1.8.1 | 小组会议 | manual | 0.13d | 2017-11-18 09:00 | 2017-11-18 10:02 |  |  |  |  |  |  |  | 蒋家俊 [20%]; 李捷 [20%]; 厉佩强 [20%]; 周盛 [20%]; 朱秉 [20%] | 1.04h |  | 32.21 |  |
| 54 | 1.8.2 | 用户访谈 | manual | 1h | 2017-11-23 09:00 A | 2017-11-23 10:00 A | 50 | 100% |  |  |  |  |  | 蒋家俊; 李捷; 厉佩强; 周盛; 朱秉 | 5h | 5h | 154.85 | 154.85 |
| 55 | 1.8.3 | 采用软件需求规格说明模板 |  | 1d | 2017-11-25 09:00 A | 2017-11-27 09:00 A | 54 | 100% |  |  |  |  | start no earlier than 2017-11-25 09:00 | 蒋家俊 | 0.35h | 0.35h | 10.77 | 10.77 |
| 56 | 1.8.4 | 小组会议 | manual | 0.13d | 2017-11-18 09:00 | 2017-11-18 10:02 |  |  |  |  |  |  |  | 蒋家俊 [20%]; 李捷 [20%]; 厉佩强 [20%]; 周盛 [20%]; 朱秉 [20%] | 1.04h |  | 32.21 |  |
| 57 | 1.8.5 | 小组会议 | manual | 0.13d | 2017-11-18 09:00 | 2017-11-18 10:02 |  |  |  |  |  |  |  | 蒋家俊 [20%]; 李捷 [20%]; 厉佩强 [20%]; 周盛 [20%]; 朱秉 [20%] | 1.04h |  | 32.21 |  |
| 58 | 1.8.6 | 指明需求来源 |  | 2d | 2017-12-01 09:00 A | 2017-12-05 09:00 A | 55 | 100% |  |  |  |  | start no earlier than 2017-12-01 09:00 | 厉佩强 | 9h | 9h | 278.73 | 278.73 |
| 59 | 1.8.7 | 小组会议 | manual | 0.13d | 2017-11-18 09:00 | 2017-11-18 10:02 |  |  |  |  |  |  |  | 蒋家俊 [20%]; 李捷 [20%]; 厉佩强 [20%]; 周盛 [20%]; 朱秉 [20%] | 1.04h |  | 32.21 |  |
| 60 | 1.8.8 | 为每一项需求注上记号 |  | 1d | 2017-12-05 09:00 A | 2017-12-06 09:00 A | 58 | 100% |  |  |  |  | start no earlier than 2017-12-02 09:00 | 周盛 | 1h | 1h | 30.97 | 30.97 |
| 61 | 1.8.9 | 记录业务规范 |  | 1d | 2017-12-06 09:00 A | 2017-12-07 09:00 A | 60 | 100% |  |  |  |  | start no earlier than 2017-12-03 09:00 | 李捷 | 1h | 1h | 30.97 | 30.97 |
| 62 | 1.8.10 | 小组会议 | manual | 0.13d | 2017-11-18 09:00 | 2017-11-18 10:02 |  |  |  |  |  |  |  | 蒋家俊 [20%]; 李捷 [20%]; 厉佩强 [20%]; 周盛 [20%]; 朱秉 [20%] | 1.04h |  | 32.21 |  |
| 63 | 1.8.11 | 管理员访谈 | manual | 0.13d | 2017-11-18 09:00 | 2017-11-18 10:02 |  |  |  |  |  |  |  | 蒋家俊 [20%]; 李捷 [20%]; 厉佩强 [20%]; 周盛 [20%]; 朱秉 [20%] | 1.04h |  | 32.21 |  |
| 64 | 1.9 | 召开应用供需开发联系会议 |  | 0.2d | 2017-12-13 09:00 A | 2017-12-13 10:36 A |  | 100% |  |  |  |  |  | 蒋家俊; 李捷; 厉佩强; 周盛; 朱秉 | 1.6h | 1.6h | 49.55 | 49.55 |
| 65 | 1.10 | **需求规格审核** |  | 11d | 2017-12-11 09:00 | 2017-12-24 18:00 | 64 | 94% | 0.63d | 2017-12-13 10:36 |  |  |  |  | 36.08h | 34h | 1,117.4 | 1,052.98 |
| 66 | 1.10.1 | 审查需求文档 | manual | 0.88d | 2017-12-13 10:36 A | 2017-12-14 09:36 A | 64 | 100% |  |  |  |  | finish no earlier than 2017-12-13 18:00 | 蒋家俊 | 7h | 7h | 216.79 | 216.79 |
| 67 | 1.10.2 | 小组会议 | manual | 0.13d | 2017-12-14 09:00 | 2017-12-14 10:02 |  |  |  |  |  |  |  | 蒋家俊 [20%]; 李捷 [20%]; 厉佩强 [20%]; 周盛 [20%]; 朱秉 [20%] | 1.04h |  | 32.21 |  |
| 68 | 1.10.3 | 小组会议 | manual | 0.13d | 2017-12-18 09:00 | 2017-12-18 10:02 |  |  |  |  |  |  |  | 蒋家俊 [20%]; 李捷 [20%]; 厉佩强 [20%]; 周盛 [20%]; 朱秉 [20%] | 1.04h |  | 32.21 |  |
| 69 | 1.10.4 | 编写需求文档 |  | 0.25d | 2017-12-18 15:00 A | 2017-12-18 18:00 A | 66 | 100% |  |  |  |  | finish no earlier than 2017-12-18 18:00 | 朱秉 | 2h | 2h | 61.94 | 61.94 |
| 70 | 1.10.5 | 编写用户手册 | manual | 0.25d | 2017-12-18 08:00 A | 2017-12-18 10:00 A | 69 | 100% |  |  |  |  | start no earlier than 2017-12-16 09:00 | 李捷 | 2h | 2h | 61.94 | 61.94 |
| 71 | 1.10.6 | 确定合格的标准 |  | 2.88d | 2017-12-19 09:00 A | 2017-12-21 18:00 A |  | 100% |  |  |  |  | finish no earlier than 2017-12-21 18:00 | 厉佩强 | 23h | 23h | 712.31 | 712.31 |
| 72 | 1.11 | **需求管理** |  | 6d | 2017-12-24 09:00 A | 2018-01-01 09:00 | 71 | 4% | 5.75d |  |  |  |  |  | 19.04h | 1.04h | 589.67 | 32.21 |
| 73 | 1.11.1 | 管理员访谈 | manual | 0.13d | 2017-12-24 09:00 A | 2017-12-24 10:02 A |  | 100% |  |  |  |  |  | 蒋家俊 [20%]; 李捷 [20%]; 厉佩强 [20%]; 周盛 [20%]; 朱秉 [20%] | 1.04h | 1.04h | 32.21 | 32.21 |
| 74 | 1.11.2 | 确定变更控制过程 |  | 0.25d | 2017-12-25 09:00 | 2017-12-25 11:00 |  |  |  |  | 16.62d |  | start no earlier than 2017-12-25 09:00 | 蒋家俊 | 2h |  | 61.94 |  |
| 75 | 1.11.3 | 建立变更控制委员会 |  | 0.25d | 2017-12-25 09:00 | 2017-12-25 11:00 |  |  |  |  | 16.62d |  | start no earlier than 2017-12-25 09:00 | 蒋家俊 | 2h |  | 61.94 |  |
| 76 | 1.11.4 | 进行变更影响分析 | manual | 0.25d | 2017-12-26 09:00 | 2017-12-26 11:00 |  |  |  |  |  |  | start no earlier than 2017-12-26 09:00 | 厉佩强 | 2h |  | 61.94 |  |
| 77 | 1.11.5 | 跟踪每一项变更 |  | 0.25d | 2017-12-26 11:00 | 2017-12-26 14:00 | 76 |  |  |  | 14.88d | 0d |  | 李捷 | 2h |  | 61.94 |  |
| 78 | 1.11.6 | 编写需求文档的基准版本和控制版本 |  | 0.25d | 2017-12-26 14:00 | 2017-12-26 16:00 | 77 |  |  |  | 14.88d | 1d | start no earlier than 2017-12-26 09:00 | 厉佩强 | 2h |  | 61.94 |  |
| 79 | 1.11.7 | 维护变更历史纪录 | manual | 0.25d | 2017-12-27 16:00 | 2017-12-27 18:00 | 78 |  |  |  |  |  | start no earlier than 2017-12-14 09:00 | 朱秉 | 2h |  | 61.94 |  |
| 80 | 1.11.8 | 跟踪需求状态 |  | 0.25d | 2017-12-28 09:00 | 2017-12-28 11:00 |  |  |  |  | 13.62d |  | start no earlier than 2017-12-28 09:00 | 周盛 | 2h |  | 61.94 |  |
| 81 | 1.11.9 | 衡量需求稳定性 |  | 0.25d | 2017-12-29 09:00 | 2017-12-29 11:00 |  |  |  |  | 12.62d |  | start no earlier than 2017-12-29 09:00 | 厉佩强 | 2h |  | 61.94 |  |
| 82 | 1.11.10 | 使用需求管理工具 | manual | 1d | 2017-12-24 09:00 | 2017-12-25 09:00 |  |  |  |  |  |  | start no earlier than 2017-12-15 09:00 | 李捷 | 2h |  | 61.94 |  |

| ID | WBS | Task | Type | Duration | Start | Finish | Predecessors | Total slack | Constraint | Resources | Work | Cost |
| --- | --- | --- | --- | --- | --- | --- | --- | --- | --- | --- | --- | --- |
| 83 | 1.12 | **项目收尾** |  | 23d | 2017-12-17 09:00 | 2018-01-15 18:00 |  |  |  |  | 24h | 743.28 |
| 84 | 1.12.1 | 文档整理 | manual | 1d | 2017-12-18 08:00 | 2017-12-18 17:00 |  |  |  | 蒋家俊 [20%]; 李捷 [20%]; 厉佩强 [20%]; 周盛 [20%]; 朱秉 [20%] | 8h | 247.76 |
| 85 | 1.12.2 | 制作PPT | manual | 1d | 2017-12-26 09:00 | 2017-12-27 09:00 | 84 |  |  | 蒋家俊 [20%]; 李捷 [20%]; 厉佩强 [20%]; 周盛 [20%]; 朱秉 [20%] | 8h | 247.76 |
| 86 | 1.12.3 | 答辩 |  | 1d | 2018-01-14 09:00 | 2018-01-15 09:00 | 85 | 0.88d | start no earlier than 2018-01-14 09:00 | 蒋家俊 [20%]; 李捷 [20%]; 厉佩强 [20%]; 周盛 [20%]; 朱秉 [20%] | 8h | 247.76 |
