Schedule from MS Project, 2017-10-11 to 2018-01-24, costs in ¥, A marks actual dates.
Microsoft

## Calendars

- 标准: Mon-Fri 08:00-12:00, 13:00-17:00; Sat-Sun off. Exceptions (off unless hours are given): 2017-10-11 to 2018-01-30 08:00-12:00, 13:00-17:00 (周日上班, recurring), 2017-10-11 to 2018-01-30 08:00-12:00, 13:00-17:00 (周六上班, recurring).

## Resources

| Resource | Rate |
| --- | --- |
| G17全组成员 | 30.97 |
| 蒋家俊 | 30.97 |
| 李捷 | 30.97 |
| 朱秉 | 30.97 |
| 厉佩强 | 30.97 |
| 周盛 | 30.97 |

## Schedule

| ID | WBS | Task | Type | Duration | Start | Finish | Predecessors | Complete | Actual start | Actual finish | Constraint | Resources | Work | Actual work | Cost | Actual cost |
| --- | --- | --- | --- | --- | --- | --- | --- | --- | --- | --- | --- | --- | --- | --- | --- | --- |
| 1 | 1 | **项目启动** |  | 4d | 2017-10-11 A | 2017-10-14 |  | 100% |  | 2017-10-13 |  |  | 9h | 9h | 278.73 | 278.73 |
| 2 | 1.1 | 项目任务书下达 | manual | 0.12d | 2017-10-11 A | 2017-10-11 A |  | 100% |  |  |  | 蒋家俊 | 1h | 1h | 30.97 | 30.97 |
| 3 | 1.2 | 软件资源配置 | manual | 0.38d | 2017-10-12 A | 2017-10-12 A | 2 | 100% |  |  |  | 蒋家俊 | 3h | 3h | 92.91 | 92.91 |
| 4 | 1.3 | 小组会议 | manual | 0.12d | 2017-10-12 A | 2017-10-12 A | 3 | 100% |  |  |  | 蒋家俊 [20%]; 李捷 [20%]; 厉佩强 [20%]; 周盛 [20%]; 朱秉 [20%] | 1h | 1h | 30.97 | 30.97 |
| 5 | 1.4 | 文档分析 | manual | 0.1d | 2017-10-13 A | 2017-10-13 A | 4 | 100% |  |  |  | 蒋家俊 [20%]; 李捷 [20%]; 厉佩强 [20%]; 周盛 [20%]; 朱秉 [20%] | 4h | 4h | 123.88 | 123.88 |
| 6 | 2 | **可行性分析报告** |  | 7d | 2017-10-14 A | 2017-10-21 | 5 | 100% |  | 2017-10-20 |  |  | 25.4h | 25.4h | 786.64 | 786.64 |
| 7 | 2.1 | 技术可行性分析 | manual | 0.12d | 2017-10-14 A | 2017-10-14 A | 5 | 100% |  |  |  | 李捷; 朱秉 | 2h | 2h | 61.94 | 61.94 |
| 8 | 2.2 | 用户使用可行性分析 | manual | 0.25d | 2017-10-14 A | 2017-10-14 A | 7 | 100% |  |  |  | 厉佩强 | 2h | 2h | 61.94 | 61.94 |
| 9 | 2.3 | 设备可行性分析 | manual | 0.25d | 2017-10-15 A | 2017-10-15 A | 8 | 100% |  |  |  | 朱秉 | 0.4h | 0.4h | 12.39 | 12.39 |
| 10 | 2.4 | 相关软件学习 | manual | 1d | 2017-10-15 A | 2017-10-15 A | 9 | 100% |  |  |  | 蒋家俊 [20%]; 李捷 [20%]; 厉佩强 [20%]; 周盛 [20%]; 朱秉 [20%] | 8h | 8h | 247.76 | 247.76 |
| 11 | 2.5 | 文档编写 | manual | 0.62d | 2017-10-15 A | 2017-10-15 A | 10 | 100% |  |  |  | 蒋家俊 [20%]; 李捷 [20%]; 厉佩强 [20%]; 周盛 [20%]; 朱秉 [20%] | 5h | 5h | 154.85 | 154.85 |
| 12 | 2.6 | 小组会议 | manual | 1d | 2017-10-19 A | 2017-10-20 A | 11 | 100% |  |  |  | 蒋家俊 [20%]; 李捷 [20%]; 厉佩强 [20%]; 周盛 [20%]; 朱秉 [20%] | 8h | 8h | 247.76 | 247.76 |
| 13 | 3 | **项目章程** |  | 7d | 2017-10-21 | 2017-10-29 | 12 | 100% | 2017-10-16 | 2017-10-18 |  |  | 9h | 9h | 278.73 | 278.73 |
| 14 | 3.1 | 小组会议 | manual | 0.62d | 2017-10-16 A | 2017-10-16 A | 12 | 100% |  |  |  | 蒋家俊 [20%]; 李捷 [20%]; 厉佩强 [20%]; 周盛 [20%]; 朱秉 [20%] | 5h | 5h | 154.85 | 154.85 |
| 15 | 3.2 | 文档编写 | manual | 2.5d | 2017-10-16 A | 2017-10-18 A | 14 | 100% |  |  |  | 周盛 | 4h | 4h | 123.88 | 123.88 |
| 16 | 4 | **项目总体计划** |  | 9d | 2017-10-21 A | 2017-10-29 | 15 | 100% |  | 2017-10-27 |  |  | 42h | 42h | 1,300.74 | 1,300.74 |
| 17 | 4.1 | WBS | manual | 0.5d | 2017-10-21 A | 2017-10-21 A | 15 | 100% |  |  |  | 周盛 | 4h | 4h | 123.88 | 123.88 |
| 18 | 4.2 | OBS | manual | 0.38d | 2017-10-21 A | 2017-10-21 A | 17 | 100% |  |  |  | 蒋家俊 | 3h | 3h | 92.91 | 92.91 |
| 19 | 4.3 | GANT | manual | 1.25d | 2017-10-21 A | 2017-10-22 A | 18 | 100% |  |  |  | 蒋家俊 | 10h | 10h | 309.7 | 309.7 |
| 20 | 4.4 | 小组会议 | manual | 0.12d | 2017-10-23 A | 2017-10-23 A | 19 | 100% |  |  |  | 蒋家俊 [20%]; 李捷 [20%]; 厉佩强 [20%]; 周盛 [20%]; 朱秉 [20%] | 1h | 1h | 30.97 | 30.97 |
| 21 | 4.5 | 文档编写 | manual | 2d | 2017-10-21 A | 2017-10-23 A | 20 | 100% |  |  |  | 蒋家俊 [20%]; 李捷 [20%]; 厉佩强 [20%]; 周盛 [20%]; 朱秉 [20%] | 16h | 16h | 495.52 | 495.52 |
| 22 | 4.6 | 小组会议 |  | 1d | 2017-10-26 A | 2017-10-27 A | 21 | 100% |  |  |  | 蒋家俊 [20%]; 李捷 [20%]; 厉佩强 [20%]; 周盛 [20%]; 朱秉 [20%] | 8h | 8h | 247.76 | 247.76 |
| 23 | 5 | **需求开发计划** |  | 30d | 2017-10-21 | 2017-11-19 | 22 | 100% | 2017-10-29 | 2017-11-16 |  |  | 56h | 56h | 1,734.32 | 1,734.32 |
| 24 | 5.1 | 需求开发计划-初步 |  | 0.88d | 2017-10-29 A | 2017-10-29 A | 22 | 100% |  |  | finish no earlier than 2017-10-29 | 蒋家俊 [20%]; 李捷 [20%]; 厉佩强 [20%]; 周盛 [20%]; 朱秉 [20%] | 7h | 7h | 216.79 | 216.79 |
| 25 | 5.2 | 小组会议 |  | 2h | 2017-11-02 A | 2017-11-02 A | 24 | 100% |  |  |  | 蒋家俊 [20%]; 李捷 [20%]; 厉佩强 [20%]; 周盛 [20%]; 朱秉 [20%] | 2h | 2h | 61.94 | 61.94 |
| 26 | 5.3 | 需求开发计划-修改 |  | 0.88d | 2017-11-02 A | 2017-11-02 A | 25 | 100% |  |  |  | 厉佩强 | 7h | 7h | 216.79 | 216.79 |
| 27 | 5.4 | 阶段评审 | milestone | 0d | 2017-11-04 A | 2017-11-04 A | 26 | 100% |  |  |  | 蒋家俊 |  |  |  |  |
| 28 | 5.5 | 需求工程计划讲解 | manual | 1d | 2017-11-16 A | 2017-11-16 A | 27 | 100% |  |  |  | 蒋家俊; 李捷; 厉佩强; 周盛; 朱秉 | 40h | 40h | 1,238.8 | 1,238.8 |

| ID | WBS | Task | Type | Duration | Start | Finish | Predecessors | Complete | Remaining | Actual start | Total slack | Constraint | Resources | Work | Actual work | Cost | Actual cost |
| --- | --- | --- | --- | --- | --- | --- | --- | --- | --- | --- | --- | --- | --- | --- | --- | --- | --- |
| 29 | 6 | **QA计划** |  | 7d | 2017-10-30 A | 2017-11-06 A | 28 | 100% |  |  |  |  |  | 88h | 88h | 2,725.36 | 2,725.36 |
| 30 | 6.1 | 质量目标设定 | manual | 1d | 2017-10-30 A | 2017-10-31 A | 28 | 100% |  |  |  |  | 蒋家俊 | 8h | 8h | 247.76 | 247.76 |
| 31 | 6.2 | 评估与测试 | manual | 1d | 2017-10-31 A | 2017-11-01 A | 30 | 100% |  |  |  |  | 李捷 | 8h | 8h | 247.76 | 247.76 |
| 32 | 6.3 | 质量记录 | manual | 1d | 2017-11-02 A | 2017-11-03 A | 31 | 100% |  |  |  |  | 朱秉 | 8h | 8h | 247.76 | 247.76 |
| 33 | 6.4 | 风险管理 |  | 2d | 2017-11-03 A | 2017-11-05 A | 32 | 100% |  |  |  |  | 李捷 | 16h | 16h | 495.52 | 495.52 |
| 34 | 6.5 | 文档书写 |  | 2.12d | 2017-11-04 A | 2017-11-06 A | 33 | 100% |  |  |  |  | 蒋家俊; 李捷; 朱秉 | 48h | 48h | 1,486.56 | 1,486.56 |
| 35 | 7 | **软件需求规格说明书** |  | 35d | 2017-11-06 | 2017-12-10 | 34 | 45% | 19.13d | 2017-11-09 |  |  |  | 201h | 81h | 6,224.97 | 2,508.57 |
| 36 | 7.1 | 小组会议 | manual | 1d | 2017-11-09 A | 2017-11-09 A | 34 | 100% |  |  |  |  | 蒋家俊 [20%]; 李捷 [20%]; 厉佩强 [20%]; 周盛 [20%]; 朱秉 [20%] | 8h | 8h | 247.76 | 247.76 |
| 37 | 7.2 | 系统概述编写 | manual | 2.12d | 2017-11-10 A | 2017-11-12 A | 36 | 100% |  |  |  |  | 李捷 | 17h | 17h | 526.49 | 526.49 |
| 38 | 7.3 | 功能需求分类 |  | 4d | 2017-11-13 A | 2017-11-17 A | 37 | 100% |  |  |  | start no earlier than 2017-11-13 | 厉佩强 | 32h | 32h | 991.04 | 991.04 |
| 39 | 7.4 | 非功能需求分类 | manual | 1d | 2017-11-17 A | 2017-11-18 A | 38 | 100% |  |  |  |  | 周盛 | 8h | 8h | 247.76 | 247.76 |
| 40 | 7.5 | 用例描述 | manual | 1d | 2017-11-18 A | 2017-11-19 A | 39 | 100% |  |  |  |  | 厉佩强; 周盛 | 16h | 16h | 495.52 | 495.52 |
| 41 | 7.6 | E-R图，数据流图，数据字典 | manual | 1d | 2017-11-19 | 2017-11-20 | 40 |  |  |  |  |  | 李捷 | 8h |  | 247.76 |  |
| 42 | 7.7 | 外部接口 | manual | 1d | 2017-11-20 | 2017-11-21 | 41 |  |  |  |  |  | 朱秉 | 8h |  | 247.76 |  |
| 43 | 7.8 | 分析模型 | manual | 1d | 2017-11-21 | 2017-11-22 | 42 |  |  |  |  |  | 蒋家俊 | 8h |  | 247.76 |  |
| 44 | 7.9 | 文档编写 | manual | 1d | 2017-11-22 | 2017-11-23 | 43 |  |  |  |  |  | 蒋家俊; 李捷; 厉佩强; 周盛; 朱秉 | 40h |  | 1,238.8 |  |
| 45 | 7.10 | 软件需求规格说明书-修改 | manual | 7d | 2017-11-23 | 2017-11-30 | 44 |  |  |  |  |  | 李捷 | 56h |  | 1,734.32 |  |
| 46 | 8 | **阶段评审** |  | 2d | 2017-12-09 | 2017-12-10 | 45 |  |  |  |  |  |  | 128h |  | 3,964.16 |  |
| 47 | 8.1 | 文档整理 | manual | 7d | 2017-11-30 | 2017-12-07 | 45 |  |  |  |  |  | 周盛; 朱秉 | 112h |  | 3,468.64 |  |
| 48 | 8.2 | 审核汇报 | manual | 2d | 2017-12-07 | 2017-12-09 | 47 |  |  |  |  |  | 蒋家俊 | 16h |  | 495.52 |  |
| 49 | 9 | **需求变更文档** |  | 15d | 2017-12-10 | 2017-12-24 | 48 |  |  |  |  |  |  | 24h |  | 743.28 |  |
| 50 | 9.1 | 需求变更分析 |  | 1d | 2017-12-10 | 2017-12-11 | 48 |  |  |  | 0d |  | 李捷 | 8h |  | 247.76 |  |
| 51 | 9.2 | 文档编写 | manual | 2d | 2017-12-11 | 2017-12-13 | 50 |  |  |  |  |  | 周盛 | 16h |  | 495.52 |  |
| 52 | 10 | **需求变更文档-修改** |  | 8d | 2017-12-17 | 2017-12-24 | 51 |  |  |  |  |  |  | 24h |  | 743.28 |  |
| 53 | 10.1 | 需求变更文档分析 | manual | 2d | 2017-12-13 | 2017-12-15 | 51 |  |  |  |  |  | 朱秉 | 16h |  | 495.52 |  |
| 54 | 10.2 | 文档编写 |  | 1d | 2017-12-24 | 2017-12-24 | 53 |  |  |  | 0d | finish no earlier than 2017-12-24 | 厉佩强 | 8h |  | 247.76 |  |

| ID | WBS | Task | Type | Duration | Start | Finish | Predecessors | Total slack | Constraint | Resources | Work | Cost |
| --- | --- | --- | --- | --- | --- | --- | --- | --- | --- | --- | --- | --- |
| 55 | 11 | **阶段评审** |  | 8d | 2017-12-17 | 2017-12-24 | 54 |  |  |  | 40h | 1,238.8 |
| 56 | 11.1 | 文档整理 |  | 1d | 2017-12-25 | 2017-12-25 | 54 | 0d |  | 李捷; 厉佩强; 周盛; 朱秉 | 32h | 991.04 |
| 57 | 11.2 | 审核汇报 |  | 1d | 2017-12-26 | 2017-12-26 | 56 | 0d |  | 蒋家俊 | 8h | 247.76 |
| 58 | 12 | **系统设计与实现计划** |  | 8d | 2017-12-25 | 2018-01-02 | 57 |  |  |  | 57.6h | 1,783.87 |
| 59 | 12.1 | 制定计划 | manual | 3d | 2017-12-27 | 2017-12-29 | 57 |  |  | 蒋家俊 | 24h | 743.28 |
| 60 | 12.2 | 小组会议 | manual | 1d | 2017-12-30 | 2017-12-30 | 59 |  |  | 蒋家俊 [20%]; 李捷 [20%]; 厉佩强 [20%]; 周盛 [20%]; 朱秉 [20%] | 8h | 247.76 |
| 61 | 12.3 | 文档编写 | manual | 4d | 2017-12-31 | 2018-01-03 | 60 |  |  | 蒋家俊 [20%]; 厉佩强 [20%]; 周盛 [20%]; 朱秉 [20%] | 25.6h | 792.83 |
| 62 | 13 | **软件概要设计说明** |  | 16d | 2018-01-01 | 2018-01-17 | 61 |  |  |  | 32h | 991.04 |
| 63 | 13.1 | 总体设计 | manual | 1d | 2018-01-04 | 2018-01-04 | 61 |  |  | 李捷 | 8h | 247.76 |
| 64 | 13.2 | 子系统设计 | manual | 1d | 2018-01-05 | 2018-01-05 | 63 |  |  | 厉佩强 | 8h | 247.76 |
| 65 | 13.3 | 系统数据结构设计 | manual | 1d | 2018-01-06 | 2018-01-06 | 64 |  |  | 周盛 | 8h | 247.76 |
| 66 | 13.4 | 系统出错处理设计 | manual | 1d | 2018-01-07 | 2018-01-07 | 65 |  |  | 朱秉 | 8h | 247.76 |
| 67 | 14 | **测试计划** |  | 14d | 2017-10-11 | 2017-10-25 | 66 |  |  |  | 32h | 991.04 |
| 68 | 14.1 | 测试方法 | manual | 1d | 2018-01-08 | 2018-01-08 | 66 |  |  | 厉佩强 | 8h | 247.76 |
| 69 | 14.2 | 测试实现 | manual | 1d | 2018-01-09 | 2018-01-09 | 68 |  |  | 周盛 | 8h | 247.76 |
| 70 | 14.3 | 资源需求 | manual | 1d | 2018-01-10 | 2018-01-10 | 69 |  |  | 朱秉 | 8h | 247.76 |
| 71 | 14.4 | 测试过程管理 | manual | 1d | 2018-01-11 | 2018-01-11 | 70 |  |  | 蒋家俊 | 8h | 247.76 |
| 72 | 15 | **安装部署计划** |  | 14d | 2018-01-01 | 2018-01-14 | 71 |  |  |  | 24h | 743.28 |
| 73 | 15.1 | 制定计划 | manual | 1d | 2018-01-12 | 2018-01-12 | 71 |  |  | 蒋家俊 | 8h | 247.76 |
| 74 | 15.2 | 安装步骤 | manual | 1d | 2018-01-13 | 2018-01-13 | 73 |  |  | 李捷 | 8h | 247.76 |
| 75 | 15.3 | 文档整理 | manual | 1d | 2018-01-14 | 2018-01-14 | 74 |  |  | 周盛 | 8h | 247.76 |
| 76 | 16 | 培训计划 |  | 0.88d | 2018-01-15 | 2018-01-15 | 75 | 0d | start no earlier than 2018-01-15 | 周盛 | 7h | 216.79 |
| 77 | 17 | **系统维护计划** |  | 2d | 2018-01-16 | 2018-01-17 | 76 | 0d |  |  | 16h | 495.52 |
| 78 | 17.1 | 软件维护 | manual | 1d | 2018-01-16 | 2018-01-16 | 76 |  |  | 蒋家俊 | 8h | 247.76 |
| 79 | 17.2 | 硬件维护 | manual | 1d | 2018-01-17 | 2018-01-17 | 78 |  |  | 李捷 | 8h | 247.76 |

| ID | WBS | Task | Type | Duration | Start | Finish | Predecessors | Total slack | Resources | Work | Cost |
| --- | --- | --- | --- | --- | --- | --- | --- | --- | --- | --- | --- |
| 80 | 18 | **项目总结报告** |  | 8d | 2018-01-15 | 2018-01-22 | 79 |  |  | 40h | 1,238.8 |
| 81 | 18.1 | 文档编写 | manual | 1d | 2018-01-18 | 2018-01-18 | 79 |  | 蒋家俊; 李捷; 厉佩强; 周盛; 朱秉 | 40h | 1,238.8 |
| 82 | 19 | **答辩** |  | 2d | 2018-01-22 | 2018-01-24 | 80 |  |  | 8h | 247.76 |
| 83 | 19.1 | 评审报告 |  | 1d | 2018-01-23 | 2018-01-23 | 80 | 0.12d | 蒋家俊 | 8h | 247.76 |
